Schedule from MS Project, 2015-02-12 to 2015-09-30, costs in €, A marks actual dates.

## Calendars

- Estándar: Mon-Fri 09:00-13:00, 15:00-19:00; Sat-Sun off.

## Resources

| Resource |
| --- |
| Enrique Moreno |
| Encarna Marín |
| Sebastián Del Rio |
| Vicente Pérez |
| Cursos .NET |
| Alba Martínez |
| Ana Sebastián (A) |
| Jose Luis Fernández |
| María Peris |
| Silvia Cerezo (T) |
| Silvia Cerezo (P) |
| Ana Sebastián (PW) |
| Rafael Benito |
| Maquinas expendedoras |
| Ordenadores (taquilla) |
| Ordenadores (web) |
| Muebles |
| Servidor |
| Butacas |
| Moqueta |
| Instaladores butacas/moqueta |
| Oficiales electricos |
| Aprendices electricos |
| Iluminado |
| Aire acondicionado |
| Instalador AC experimentado |
| Instalador AC Nobel |
| Operarios de limpieza |
| Material de limpieza |
| Agua potable |
| Luz electrica |
| Oficinas |
| Dietas |
| Seguro |

## Schedule

| ID | WBS | Task | Type | Duration | Start | Finish | Predecessors | Complete | Remaining | Baseline start | Baseline finish | Baseline duration | Total slack | Free slack | Constraint | Resources | Work | Actual work | Cost | Baseline cost | Actual cost |
| --- | --- | --- | --- | --- | --- | --- | --- | --- | --- | --- | --- | --- | --- | --- | --- | --- | --- | --- | --- | --- | --- |
| 1 | 1 | **Responsabilidad de la dirección** |  | 160.5d | 2015-02-18 | 2015-09-30 |  |  |  | 2015-02-18 | 2015-09-30 | 160.5d | 0d |  |  |  | 1656h |  | 4,289.35 | 4,159.35 |  |
| 2 | 1.1 | 1 reunión con cliente |  | 1d | 2015-02-18 | 2015-02-19 |  |  |  | 2015-02-18 | 2015-02-19 | 1d | 159.5d |  |  | Enrique Moreno | 8h |  | 82.5 | 82.5 |  |
| 3 | 1.2 | Presentación de proyecto al cliente | manual | 1d | 2015-03-11 | 2015-03-12 | 62 |  |  | 2015-03-11 | 2015-03-12 | 1d |  |  |  | Enrique Moreno | 8h |  | 82.5 | 82.5 |  |
| 4 | 1.3 | Compra de ordenadores (SEINGESA) | manual | 159.5d | 2015-02-18 | 2015-09-29 |  |  |  |  |  |  |  |  |  | Ordenadores (web) |  |  | 130 |  |  |
| 5 | 1.4 | Gastos indirectos | manual | 41d | 2015-02-18 | 2015-04-15 |  |  |  | 2015-02-18 | 2015-04-15 | 41d |  |  |  | Agua potable; Dietas; Luz electrica; Oficinas; Seguro | 1640h |  | 3,994.35 | 3,994.35 |  |
| 6 | 1.5 | Taquillas y equipos instalados | milestone, manual | 0d | 2015-02-23 | 2015-02-23 | 37 |  |  | 2015-02-23 | 2015-02-23 |  |  |  |  |  |  |  |  |  |  |
| 7 | 1.6 | Finalización de sala 3D | milestone, manual | 0d | 2015-09-18 | 2015-09-18 | 44 |  |  | 2015-09-18 | 2015-09-18 |  |  |  |  |  |  |  |  |  |  |
| 8 | 1.7 | Finalización de sala digital | milestone, manual | 0d | 2015-04-24 | 2015-04-24 | 51 |  |  | 2015-04-24 | 2015-04-24 |  |  |  |  |  |  |  |  |  |  |
| 9 | 1.8 | Finalización de sala VO | milestone, manual | 0d | 2015-08-28 | 2015-08-28 | 58 |  |  | 2015-08-28 | 2015-08-28 |  |  |  |  |  |  |  |  |  |  |
| 10 | 1.9 | Finalización web | milestone, manual | 0d | 2015-04-15 | 2015-04-15 | 85 |  |  | 2015-04-15 | 2015-04-15 |  |  |  |  |  |  |  |  |  |  |
| 11 | 1.10 | Entrega final | milestone, manual | 0d | 2015-09-18 | 2015-09-18 | 44 |  |  | 2015-09-18 | 2015-09-18 |  |  |  |  |  |  |  |  |  |  |
| 12 | 1.11 | Amoritiguador del proyecto | manual | 8.5d | 2015-09-18 | 2015-09-30 |  |  |  | 2015-09-18 | 2015-09-30 | 8.5d |  |  |  |  |  |  |  |  |  |
| 13 | 2 | **Gestión de recursos** |  | 13.25d | 2015-02-12 A | 2015-03-03 |  | 48% | 6.92d | 2015-02-12 | 2015-03-03 | 13.25d | 151d |  |  |  | 291.2h | 19.4h | 3,014.62 | 3,014.62 | 198.3 |
| 14 | 2.1 | Busqueda de proveedores de máquinas expendedoras |  | 5.62d | 2015-02-12 A | 2015-02-19 |  | 75% | 1.41d | 2015-02-12 | 2015-02-19 | 5.62d | 158.5d |  | finish no earlier than 2015-02-19 | Silvia Cerezo (T) [20%] | 9h | 6.75h | 101.25 | 101.25 | 75.94 |
| 15 | 2.2 | Busqueda de proveedores de ordenadores |  | 1d | 2015-02-18 A | 2015-02-19 |  | 75% | 0.25d | 2015-02-18 | 2015-02-19 | 1d | 159.5d |  |  | Rafael Benito [20%] | 1.6h | 1.2h | 13.75 | 13.75 | 10.31 |
| 16 | 2.3 | Busqueda de proveedores de muebles |  | 1.12d | 2015-02-18 A | 2015-02-19 |  | 75% | 0.28d | 2015-02-18 | 2015-02-19 | 1.12d | 159.38d |  |  | Rafael Benito [20%] | 1.8h | 1.35h | 15.47 | 15.47 | 11.6 |
| 17 | 2.4 | Busqueda de proveedores de proyectores |  | 1.12d | 2015-02-18 A | 2015-02-19 |  | 75% | 0.28d | 2015-02-18 | 2015-02-19 | 1.12d | 159.38d |  |  | Rafael Benito [20%] | 1.8h | 1.35h | 15.47 | 15.47 | 11.6 |
| 18 | 2.5 | Busqueda de empresas de electricidad |  | 1.12d | 2015-02-18 A | 2015-02-19 |  | 75% | 0.28d | 2015-02-18 | 2015-02-19 | 1.12d | 159.38d |  |  | Rafael Benito [20%] | 1.8h | 1.35h | 15.47 | 15.47 | 11.6 |
| 19 | 2.6 | Busqueda de instaladores de aire acondicionado |  | 1.12d | 2015-02-18 | 2015-02-19 |  |  |  | 2015-02-18 | 2015-02-19 | 1.12d | -1.5d | 0d |  | Rafael Benito [20%] | 1.8h |  | 15.47 | 15.47 |  |
| 20 | 2.7 | Busqueda de instaladores de moqueta/sillones |  | 1d | 2015-02-18 A | 2015-02-19 |  | 75% | 0.25d | 2015-02-18 | 2015-02-19 | 1d | 159.5d |  |  | Silvia Cerezo (T) [20%] | 1.6h | 1.2h | 18 | 18 | 13.5 |
| 21 | 2.8 | Busqueda de cursos .NET |  | 1d | 2015-02-18 A | 2015-02-18 A |  | 100% |  | 2015-02-18 | 2015-02-18 | 1d |  |  |  | Silvia Cerezo (T) [20%] | 1.4h | 1.4h | 15.75 | 15.75 | 15.75 |
| 22 | 2.9 | Contratación de instaladores eléctricos |  | 1d | 2015-02-18 A | 2015-02-19 |  | 75% | 0.25d | 2015-02-18 | 2015-02-19 | 1d | 159.5d |  |  | Silvia Cerezo (T) [20%] | 1.6h | 1.2h | 18 | 18 | 13.5 |
| 23 | 2.10 | Contratación de instaladores de AC |  | 1d | 2015-02-18 A | 2015-02-19 |  | 75% | 0.25d | 2015-02-18 | 2015-02-19 | 1d | 159.5d |  |  | Silvia Cerezo (T) [20%] | 1.6h | 1.2h | 18 | 18 | 13.5 |
| 24 | 2.11 | Contratación de instaladores moqueda/sillones |  | 1d | 2015-02-18 A | 2015-02-19 |  | 75% | 0.25d | 2015-02-18 | 2015-02-19 | 1d | 159.5d |  |  | Ana Sebastián (A) [20%] | 1.6h | 1.2h | 14 | 14 | 10.5 |
| 25 | 2.12 | Matriculación en cursos |  | 1d | 2015-02-18 A | 2015-02-19 |  | 75% | 0.25d | 2015-02-18 | 2015-02-19 | 1d | 159.5d |  |  | Ana Sebastián (A) [20%] | 1.6h | 1.2h | 14 | 14 | 10.5 |
| 26 | 2.13 | Cursos de .NET | manual | 8.5d | 2015-02-19 | 2015-03-03 |  |  |  | 2015-02-19 | 2015-03-03 | 8.5d |  |  |  | Cursos .NET; Encarna Marín; Enrique Moreno; Sebastián Del Rio; Vicente Pérez | 264h |  | 2,740 | 2,740 |  |

| ID | WBS | Task | Type | Duration | Start | Finish | Predecessors | Complete | Remaining | Baseline start | Baseline finish | Baseline duration | Total slack | Free slack | Resources | Work | Actual work | Cost | Baseline cost | Actual cost |
| --- | --- | --- | --- | --- | --- | --- | --- | --- | --- | --- | --- | --- | --- | --- | --- | --- | --- | --- | --- | --- |
| 27 | 3 | **Realización del producto** |  | 1d? | 2015-02-18 A | 2015-02-18 |  | 4% | 0.96d? | 2015-02-18 | 2015-02-18 | 1d? |  |  |  | 5145.5h | 146.9h | 718,576.53 | 718,706.53 | 31,008.87 |
| 28 | 3.1 | Planificación instalación de máquinas |  | 1d | 2015-02-18 A | 2015-02-19 |  | 50% | 0.5d | 2015-02-18 | 2015-02-19 | 1d | -0.25d | 0d | Jose Luis Fernández [20%] | 1.6h | 0.8h | 11 | 11 | 5.5 |
| 29 | 3.2 | Planificación instalación de salas |  | 1d | 2015-02-18 A | 2015-02-19 |  | 50% | 0.5d | 2015-02-18 | 2015-02-19 | 1d | -0.25d | 0d | Jose Luis Fernández [20%] | 1.6h | 0.8h | 11 | 11 | 5.5 |
| 30 | 3.3 | Planificación portal web |  | 1d | 2015-02-18 A | 2015-02-19 |  | 50% | 0.5d | 2015-02-18 | 2015-02-19 | 1d | -0.25d | 0d | Jose Luis Fernández [20%] | 1.6h | 0.8h | 11 | 11 | 5.5 |
| 31 | 3.4 | Compra de las máquinas |  | 1d | 2015-02-18 | 2015-02-19 |  |  |  | 2015-02-18 | 2015-02-19 | 1d | -0.25d | 0d | Jose Luis Fernández [10%]; Maquinas expendedoras [2000%] | 0.8h |  | 4,005.5 | 4,005.5 |  |
| 32 | 3.5 | Compra de ordenadores |  | 1d | 2015-02-18 | 2015-02-19 |  |  |  | 2015-02-18 | 2015-02-19 | 1d | -0.25d | 0d | Jose Luis Fernández [10%]; Ordenadores (taquilla) [2000%] | 0.8h |  | 10,005.5 | 10,135.5 |  |
| 33 | 3.6 | Comprar servidor |  | 1.12d | 2015-02-19 | 2015-02-20 | 19 |  |  | 2015-02-19 | 2015-02-20 | 1.12d | -1.5d | 0d | Rafael Benito; Servidor | 9h |  | 2,077.34 | 2,077.34 |  |
| 34 | 3.7 | Compra de muebles |  | 1d | 2015-02-18 | 2015-02-19 |  |  |  | 2015-02-18 | 2015-02-19 | 1d | -0.25d | 0d | Jose Luis Fernández [10%]; Muebles | 0.8h |  | 20,005.5 | 20,005.5 |  |
| 35 | 3.8 | Instalación de máquinas |  | 3d | 2015-02-18 | 2015-02-20 |  |  |  | 2015-02-18 | 2015-02-20 | 3d | -2d | 0d |  |  |  |  |  |  |
| 36 | 3.9 | Instalación de ordenadores |  | 3d | 2015-02-18 | 2015-02-20 |  |  |  | 2015-02-18 | 2015-02-20 | 3d | -2d | 0d |  |  |  |  |  |  |
| 37 | 3.10 | Instalación de mobiliario |  | 3d | 2015-02-18 | 2015-02-20 |  |  |  | 2015-02-18 | 2015-02-20 | 3d | -2d | 0d |  |  |  |  |  |  |
| 38 | 3.11 | **Sala 3d** |  | 152.38d | 2015-02-18 | 2015-09-18 |  |  |  | 2015-02-18 | 2015-09-18 | 152.38d | -44.5d | 0d |  | 1275.9h |  | 223,898.44 | 223,898.44 |  |
| 39 | 3.11.1 | Comprar proyector y gafas | manual | 1d | 2015-02-18 | 2015-02-18 |  |  |  | 2015-02-18 | 2015-02-18 | 1d |  |  | Vicente Pérez [10%] | 0.9h |  | 8.44 | 8.44 |  |
| 40 | 3.11.2 | Poner butacas | manual | 15d | 2015-03-04 | 2015-03-25 | 42 |  |  | 2015-03-04 | 2015-03-25 | 15d |  |  | Butacas; Instaladores butacas/moqueta | 120h |  | 59,600 | 59,600 |  |
| 41 | 3.11.3 | Instalar aire acondicionado | manual | 20d | 2015-08-19 | 2015-09-16 | 48 |  |  | 2015-08-19 | 2015-09-16 | 20d |  |  | Aire acondicionado; Instalador AC experimentado; Instalador AC Nobel | 320h |  | 110,400 | 110,400 |  |
| 42 | 3.11.4 | Moqueta |  | 10.12d | 2015-02-18 | 2015-03-04 |  |  |  | 2015-02-18 | 2015-03-04 | 10.12d | -9.25d | 0d | Moqueta; Instaladores butacas/moqueta | 81h |  | 9,480 | 9,480 |  |
| 43 | 3.11.5 | Iluminado |  | 45.12d | 2015-04-22 | 2015-06-24 | 50 |  |  | 2015-04-22 | 2015-06-24 | 45.12d | -89.62d | 0d | Aprendices electricos; Iluminado; Oficiales electricos | 722h |  | 42,490 | 42,490 |  |
| 44 | 3.11.6 | Limpieza | manual | 2d | 2015-09-16 | 2015-09-18 | 41 |  |  | 2015-09-16 | 2015-09-18 | 2d |  |  | Material de limpieza; Operarios de limpieza | 32h |  | 1,920 | 1,920 |  |
| 45 | 3.12 | **Sala digital** |  | 130.38d | 2015-02-18 A | 2015-08-19 |  | 8% | 119.9d | 2015-02-18 | 2015-08-19 | 130.38d | 0d |  |  | 1273.7h | 61h | 223,746.56 | 223,746.56 | 30,296.67 |
| 46 | 3.12.1 | Compra de proyector | manual | 0.75d | 2015-02-18 | 2015-02-18 |  |  |  | 2015-02-18 | 2015-02-18 | 0.75d |  |  | Vicente Pérez [10%] | 0.7h |  | 6.56 | 6.56 |  |
| 47 | 3.12.2 | Poner butacas | manual | 15d | 2015-05-13 A | 2015-06-03 | 49 | 50% | 7.5d | 2015-05-13 | 2015-06-03 | 15d |  |  | Butacas; Instaladores butacas/moqueta | 120h | 61h | 59,600 | 59,600 | 30,296.67 |
| 48 | 3.12.3 | Instalar aire acondicionado | manual | 20d | 2015-07-22 | 2015-08-19 | 55 |  |  | 2015-07-22 | 2015-08-19 | 20d |  |  | Aire acondicionado; Instalador AC experimentado; Instalador AC Nobel | 320h |  | 110,400 | 110,400 |  |
| 49 | 3.12.4 | Moqueta | manual | 10d | 2015-04-29 | 2015-05-13 | 54 |  |  | 2015-04-29 | 2015-05-13 | 10d |  |  | Instaladores butacas/moqueta; Moqueta | 80h |  | 9,400 | 9,400 |  |
| 50 | 3.12.5 | Iluminado |  | 45d | 2015-02-18 | 2015-04-22 |  |  |  | 2015-02-18 | 2015-04-22 | 45d | -89.5d | 0d | Aprendices electricos; Iluminado; Oficiales electricos | 720h |  | 42,400 | 42,400 |  |
| 51 | 3.12.6 | Limpieza |  | 2.62d | 2015-04-22 | 2015-04-24 | 50 |  |  | 2015-04-22 | 2015-04-24 | 2.62d | -46.38d | 0d | Material de limpieza; Operarios de limpieza | 33h |  | 1,940 | 1,940 |  |

| ID | WBS | Task | Type | Duration | Start | Finish | Predecessors | Complete | Remaining | Baseline start | Baseline finish | Baseline duration | Total slack | Free slack | Constraint | Resources | Work | Actual work | Cost | Baseline cost | Actual cost |
| --- | --- | --- | --- | --- | --- | --- | --- | --- | --- | --- | --- | --- | --- | --- | --- | --- | --- | --- | --- | --- | --- |
| 52 | 3.13 | **Sala VO** |  | 112.25d | 2015-03-25 | 2015-08-28 |  |  |  | 2015-03-25 | 2015-08-28 | 112.25d | 0d |  |  |  | 1272.7h |  | 223,726.56 | 223,726.56 |  |
| 53 | 3.13.1 | Compra de proyector | manual | 0.75d | 2015-03-25 | 2015-03-25 |  |  |  | 2015-03-25 | 2015-03-25 | 0.75d |  |  |  | Vicente Pérez [10%] | 0.7h |  | 6.56 | 6.56 |  |
| 54 | 3.13.2 | Poner butacas | manual | 15d | 2015-04-08 | 2015-04-29 | 56 |  |  | 2015-04-08 | 2015-04-29 | 15d |  |  |  | Butacas; Instaladores butacas/moqueta | 120h |  | 59,600 | 59,600 |  |
| 55 | 3.13.3 | Instalar aire acondicionado | manual | 20d | 2015-06-24 | 2015-07-22 | 43 |  |  | 2015-06-24 | 2015-07-22 | 20d |  |  |  | Aire acondicionado; Instalador AC experimentado; Instalador AC Nobel | 320h |  | 110,400 | 110,400 |  |
| 56 | 3.13.4 | Moqueta | manual | 10d | 2015-03-25 | 2015-04-08 | 40 |  |  | 2015-03-25 | 2015-04-08 | 10d |  |  |  | Instaladores butacas/moqueta; Moqueta | 80h |  | 9,400 | 9,400 |  |
| 57 | 3.13.5 | Iluminado | manual | 45d | 2015-06-24 | 2015-08-26 | 43 |  |  | 2015-06-24 | 2015-08-26 | 45d |  |  |  | Aprendices electricos; Iluminado; Oficiales electricos | 720h |  | 42,400 | 42,400 |  |
| 58 | 3.13.6 | Limpieza | manual | 2d | 2015-08-26 | 2015-08-28 | 57 |  |  | 2015-08-26 | 2015-08-28 | 2d |  |  |  | Material de limpieza; Operarios de limpieza | 32h |  | 1,920 | 1,920 |  |
| 59 | 3.14 | **Portal web** |  | 39.25d? | 2015-02-19 A | 2015-04-15 |  | 6% | 37.04d? | 2015-02-19 | 2015-04-15 | 39.25d? |  |  |  |  | 1307h | 83.5h | 11,078.12 | 11,078.12 | 695.7 |
| 60 | 3.14.1 | Diseño web (cliente) |  | 6.12d | 2015-02-19 A | 2015-02-27 |  | 25% | 4.59d | 2015-02-19 | 2015-02-27 | 6.12d | 27.12d | 0d |  | Alba Martínez; Ana Sebastián (A) | 98h | 24.5h | 826.88 | 826.88 | 206.72 |
| 61 | 3.14.2 | Diseño web (gráfico) |  | 6.12d | 2015-02-19 A | 2015-02-27 |  | 25% | 4.59d | 2015-02-19 | 2015-02-27 | 6.12d | 29.12d | 0d |  | Jose Luis Fernández; María Peris | 98h | 24.5h | 719.69 | 719.69 | 179.92 |
| 62 | 3.14.3 | Diseño web (servidor) |  | 6.75d | 2015-03-03 A | 2015-03-11 | 26 | 25% | 5.06d | 2015-03-03 | 2015-03-11 | 6.75d | 1d | 0d |  | Encarna Marín; Enrique Moreno; Sebastián Del Rio | 144h | 34.5h | 1,290 | 1,290 | 309.06 |
| 63 | 3.14.4 | Edición de videos |  | 3d | 2015-02-27 | 2015-03-04 | 61 |  |  | 2015-02-27 | 2015-03-04 | 3d | 29.12d | 0d |  | Jose Luis Fernández | 24h |  | 165 | 165 |  |
| 64 | 3.14.5 | Publicación de videos |  | 1d | 2015-03-04 | 2015-03-05 | 63 |  |  | 2015-03-04 | 2015-03-05 | 1d | 29.12d |  |  | Jose Luis Fernández | 8h |  | 55 | 55 |  |
| 65 | 3.14.6 | Adquisición de recursos multimedia |  | 1.12d | 2015-02-27 | 2015-03-02 | 61 |  |  | 2015-02-27 | 2015-03-02 | 1.12d | 32d |  |  | María Peris | 9h |  | 70.31 | 70.31 |  |
| 66 | 3.14.7 | Programación web (cliente) |  | 6d | 2015-02-27 | 2015-03-09 | 60 |  |  | 2015-02-27 | 2015-03-09 | 6d | 27.12d | 0d |  | Alba Martínez; Ana Sebastián (A) | 96h |  | 810 | 810 |  |
| 67 | 3.14.8 | Entrega de web (1) | milestone, manual | 0d | 2015-03-09 | 2015-03-09 | 66 |  |  | 2015-03-09 | 2015-03-09 |  |  |  |  | Alba Martínez; Ana Sebastián (A) |  |  |  |  |  |
| 68 | 3.14.9 | Programación compra de entradas |  | 5d | 2015-03-11 | 2015-03-18 | 62 |  |  | 2015-03-11 | 2015-03-18 | 5d | 19.75d |  |  | Sebastián Del Rio | 40h |  | 337.5 | 337.5 |  |
| 69 | 3.14.10 | Programación de opiniones |  | 4.5d | 2015-03-12 | 2015-03-19 | 3 |  |  | 2015-03-12 | 2015-03-19 | 4.5d | 1d | 0d | start no earlier than 2015-03-12 | Enrique Moreno | 36h |  | 371.25 | 371.25 |  |
| 70 | 3.14.11 | Programación de avisos |  | 5d | 2015-03-11 | 2015-03-18 | 62 |  |  | 2015-03-11 | 2015-03-18 | 5d | 19.75d |  |  | Encarna Marín | 40h |  | 325 | 325 |  |
| 71 | 3.14.12 | Programación control de actualizaciones (peliculas y sesiones) | manual | 5d | 2015-03-03 | 2015-03-10 | 26 |  |  | 2015-03-03 | 2015-03-10 | 5d |  |  |  | Vicente Pérez | 35h |  | 328.12 | 328.12 |  |
| 72 | 3.14.13 | Programación de estadísticas | manual | 5d | 2015-03-03 | 2015-03-10 | 26 |  |  | 2015-03-03 | 2015-03-10 | 5d |  |  |  | Silvia Cerezo (P) | 40h |  | 275 | 275 |  |
| 73 | 3.14.14 | Programación web (servidor) |  | 5.62d | 2015-03-19 | 2015-03-26 | 69 |  |  | 2015-03-19 | 2015-03-26 | 5.62d | 1d | 0d |  | Sebastián Del Rio; Silvia Cerezo (P); Encarna Marín; Enrique Moreno | 160h |  | 1,350 | 1,350 |  |
| 74 | 3.14.15 | Terminar programación cliente | manual | 6d | 2015-03-10 | 2015-03-18 | 71 |  |  | 2015-03-10 | 2015-03-18 | 6d |  |  |  | Ana Sebastián (PW); María Peris; Vicente Pérez | 138h |  | 1,158.75 | 1,158.75 |  |
| 75 | 3.14.16 | Terminar programación servidor |  | 7d | 2015-03-26 | 2015-04-03 | 73 |  |  | 2015-03-26 | 2015-04-03 | 7d | 1d | 0d |  | Encarna Marín; Enrique Moreno; Sebastián Del Rio; Silvia Cerezo (P) | 197h |  | 1,661.88 | 1,661.88 |  |
| 76 | 3.14.17 | Entrega de web (2) | milestone, manual | 0d | 2015-04-03 | 2015-04-03 | 75 |  |  | 2015-04-03 | 2015-04-03 |  |  |  |  |  |  |  |  |  |  |
| 77 | 3.14.18 | Pruebas de web (1) | manual | 7d | 2015-04-03 | 2015-04-14 | 75 |  |  | 2015-04-03 | 2015-04-14 | 7d |  |  |  | Enrique Moreno; Rafael Benito | 112h |  | 1,058.75 | 1,058.75 |  |
| 78 | 3.14.19 | Instalar SO en servidor | manual | 1d | 2015-02-20 | 2015-02-23 | 33 |  |  | 2015-02-20 | 2015-02-23 | 1d |  |  |  | Rafael Benito | 8h |  | 68.75 | 68.75 |  |
| 79 | 3.14.20 | Configurar servidor | manual | 1d | 2015-02-23 | 2015-02-24 | 78 |  |  | 2015-02-23 | 2015-02-24 | 1d |  |  |  | Rafael Benito | 8h |  | 68.75 | 68.75 |  |
| 80 | 3.14.21 | Configurar router | manual | 1d | 2015-02-24 | 2015-02-25 | 79 |  |  | 2015-02-24 | 2015-02-25 | 1d |  |  |  | Rafael Benito | 8h |  | 68.75 | 68.75 |  |
| 81 | 3.14.22 | Instalación de web en servidor | manual | 1d | 2015-04-03 | 2015-04-06 | 75 |  |  | 2015-04-03 | 2015-04-06 | 1d |  |  |  | Rafael Benito | 8h |  | 68.75 | 68.75 |  |

| ID | WBS | Task | Type | Duration | Start | Finish | Predecessors | Baseline start | Baseline finish | Baseline duration | Total slack | Resources | Work | Cost | Baseline cost |
| --- | --- | --- | --- | --- | --- | --- | --- | --- | --- | --- | --- | --- | --- | --- | --- |
| 82 | 4 | **Medición análisis y mejora** |  | 35d | 2015-02-25 | 2015-04-15 |  | 2015-02-25 | 2015-04-15 | 35d | 0d |  | 24h | 206.25 | 206.25 |
| 83 | 4.1 | Prueba de la instalación de servidor | manual | 3d | 2015-02-25 | 2015-03-02 | 80 | 2015-02-25 | 2015-03-02 | 3d |  | Rafael Benito | 24h | 206.25 | 206.25 |
| 84 | 4.2 | Entrega web (3) | milestone, manual | 0d | 2015-04-06 | 2015-04-06 | 81 | 2015-04-06 | 2015-04-06 |  |  |  |  |  |  |
| 85 | 4.3 | Pruebas de web (2) | manual | 7d | 2015-04-06 | 2015-04-15 | 81 | 2015-04-06 | 2015-04-15 | 7d |  |  |  |  |  |
